# Databrary

Schedule from ProjectLibre, 2014-11-10 to 2015-04-27.

## Calendars

- Standard: Mon-Fri 08:00-12:00, 13:00-17:00; Sat-Sun off.

## Resources

| Resource |
| --- |
| Unassigned |

## Schedule

| ID | WBS | Task | Duration | Start | Finish | Predecessors |
| --- | --- | --- | --- | --- | --- | --- |
| 1 | 1 | **Timeline** | 21d | 2014-11-10 | 2014-12-08 |  |
| 2 | 1.1 | Drag-move | 2d | 2014-11-10 | 2014-11-11 |  |
| 3 | 1.2 | **Excerpts** | 6d | 2014-11-12 | 2014-11-19 | 2 |
| 4 | 1.2.1 | Specification | 3d | 2014-11-12 | 2014-11-14 |  |
| 5 | 1.2.2 | Viewing | 3d | 2014-11-17 | 2014-11-19 | 4 |
| 6 | 1.3 | Tags | 8d | 2014-11-20 | 2014-12-01 | 3 |
| 7 | 1.4 | Comments | 5d | 2014-12-02 | 2014-12-08 | 6 |
| 8 | 2 | **Spreadsheet** | 19d | 2015-01-09 | 2015-02-04 | 15 |
| 9 | 2.1 | Keyboard navigation | 2d | 2015-01-09 | 2015-01-12 |  |
| 10 | 2.2 | **Drop-downs** | 7d | 2015-01-13 | 2015-01-21 | 9 |
| 11 | 2.2.1 | Custom values | 2d | 2015-01-13 | 2015-01-14 |  |
| 12 | 2.2.2 | Auto fill-ins | 5d | 2015-01-15 | 2015-01-21 | 11 |
| 13 | 2.3 | Asset view | 5d | 2015-01-22 | 2015-01-28 | 10 |
| 14 | 2.4 | Record view | 5d | 2015-01-29 | 2015-02-04 | 13 |
| 15 | 3 | **Ingest** | 4d | 2015-01-05 | 2015-01-08 | 17 |
| 16 | 3.1 | JSON backend | 4d | 2015-01-05 | 2015-01-08 |  |
| 17 | 4 | **Home page** | 19d | 2014-12-09 | 2015-01-02 | 1 |
| 18 | 4.1 | Design | 2d | 2014-12-09 | 2014-12-10 |  |
| 19 | 4.2 | Volume activity feed | 5d | 2014-12-11 | 2014-12-17 | 18 |
| 20 | 4.3 | **Tag views** | 12d | 2014-12-18 | 2015-01-02 | 19 |
| 21 | 4.3.1 | List of top tags | 3d | 2014-12-26 | 2014-12-30 | 22 |
| 22 | 4.3.2 | Tagged items | 6d | 2014-12-18 | 2014-12-25 |  |
| 23 | 4.3.3 | Integrate with search | 3d | 2014-12-31 | 2015-01-02 | 21 |
| 24 | 5 | **Study design** | 12d | 2015-02-05 | 2015-02-20 | 8 |
| 25 | 5.1 | Column selection | 4d | 2015-02-05 | 2015-02-10 | 14 |
| 26 | 5.2 | Column ordering | 2d | 2015-02-11 | 2015-02-12 | 25 |
| 27 | 5.3 | Custom metric specifications | 6d | 2015-02-13 | 2015-02-20 | 26 |

Notes:
- 2: Moving records and assets, snapping to positions, un-zooming
- 4: Indicating whole or parts of assets as excerpts, settings
- 5: Allowing viewing of excerpted parts of videos when permissions restrict entire
- 6: Viewing and adding tags within sessions, voting on existing tags
- 7: Viewing and adding comments on sections of sessions
- 9: Easier tab/arrow navigation
- 10: Custom drop-down interfaces for more flexibility
- 11: Allowing custom-entered values for fixed-option metrics
- 12: Auto-complete exsiting record ids, replacing menu with auto-complete options, auto-create records
- 13: Manage top-level assets as list of files rather than containers, automatically create containers on-demand
- 14: Manage and view set of records by category, sort data by record, delete records
- 16: Backend support for new JSON-based ingest stream
- 18: General layout, plan for front page content, interface
- 19: News feed of recently created/shared volumes
- 21: Front-page list of existing tags, entry point for browsing data
- 22: Viewing volumes and sub-volumes, slots with a given tag, as videos, etc.
- 23: Allow search results to include tagged item lists
- 24: Wizard interface for the creation and management of studies
- 25: Indication of which columns to show in spreadsheet, template layout, record creation
- 26: Specification of column order per volume
- 27: Creation of custom columns, example values, descriptions

| ID | WBS | Task | Duration | Start | Finish | Predecessors |
| --- | --- | --- | --- | --- | --- | --- |
| 28 | 6 | **File format support** | 15d | 2015-02-23 | 2015-03-13 | 24 |
| 29 | 6.1 | Format detection | 5d | 2015-02-23 | 2015-02-27 |  |
| 30 | 6.2 | **Audio support** | 7d | 2015-03-02 | 2015-03-10 | 29 |
| 31 | 6.2.1 | Standard format | 3d | 2015-03-02 | 2015-03-04 |  |
| 32 | 6.2.2 | Transcoding | 2d | 2015-03-05 | 2015-03-06 | 31 |
| 33 | 6.2.3 | Browser support | 2d | 2015-03-09 | 2015-03-10 | 32 |
| 34 | 6.3 | Datavyu positioning | 3d | 2015-03-11 | 2015-03-13 | 30 |
| 35 | 7 | DOI | 3d | 2015-03-16 | 2015-03-18 | 28 |
| 36 | 8 | **Export** | 7d | 2015-03-19 | 2015-03-27 | 35 |
| 37 | 8.1 | Metadata CSV | 3d | 2015-03-19 | 2015-03-23 | 24 |
| 38 | 8.2 | Citation | 2d | 2015-03-26 | 2015-03-27 | 39 |
| 39 | 8.3 | CSV in ZIP | 2d | 2015-03-24 | 2015-03-25 | 37 |
| 40 | 9 | **Volume view** | 21d | 2015-03-30 | 2015-04-27 | 36 |
| 41 | 9.1 | Aggregate/summary data | 8d | 2015-03-30 | 2015-04-08 |  |
| 42 | 9.2 | Activity monitoring | 5d | 2015-04-09 | 2015-04-15 | 41 |
| 43 | 9.3 | Progress tracking | 5d | 2015-04-16 | 2015-04-22 | 42 |
| 44 | 9.4 | Aggregate activity | 3d | 2015-04-23 | 2015-04-27 | 43 |

Notes:
- 29: Automatically identify files by content, expand supported video formats
- 31: Determine standard format to use for storing audio files, determine browser support, quality constraints
- 32: Add audio support to transcoding infrastructure
- 33: Allow playing audio files in-browser
- 34: Export datavyu files with proper asset positioning, to allow alignment after video clipping/multiple videos
- 35: Integrate with library-provided datacite DOI interface, assign to volumes
- 37: Allow basic CSV export from volumes based on study design
- 38: Allow volume citation export as various formats for use in reference managers
- 39: Include the exported CSV in produced volume ZIP files
- 41: Aggregate and summary information about entered session-level metadata
- 42: Logs of modifications and activity on a volume
- 43: Summary information about uploaded data
- 44: Download summaries
